# PPC

Schedule from Planner, 2009-09-28 to 2009-12-19.

## Calendars

- По умолчанию: Mon-Fri 08:00-12:00, 13:00-17:00; Sat-Sun off. Exceptions (off unless hours are given): 2009-10-03 to 2009-10-04 08:00-12:00, 13:00-17:00, 2009-10-10 to 2009-10-11 08:00-12:00, 13:00-17:00, 2009-10-17 to 2009-10-18 08:00-12:00, 13:00-17:00, 2009-10-24 to 2009-10-25 08:00-12:00, 13:00-17:00, 2009-10-31 to 2009-11-01 08:00-12:00, 13:00-17:00, 2009-11-07 to 2009-11-08 08:00-12:00, 13:00-17:00, 2009-11-14 to 2009-11-15 08:00-12:00, 13:00-17:00, 2009-11-21 to 2009-11-22 08:00-12:00, 13:00-17:00, 2009-11-28 to 2009-11-29 08:00-12:00, 13:00-17:00, 2009-12-05 to 2009-12-06 08:00-12:00, 13:00-17:00, 2009-12-12 to 2009-12-13 08:00-12:00, 13:00-17:00, 2009-12-19 08:00-12:00, 13:00-17:00.

## Resources

| Resource |
| --- |
| Левченко Денис |
| Варламкин Алексей |
| Бондалетов Алексей |

## Schedule

| ID | WBS | Task | Start | Finish | Predecessors | Complete | Resources | Work |
| --- | --- | --- | --- | --- | --- | --- | --- | --- |
| 1 | 1 | Проектирование архитектуры системы | 2009-09-28 | 2009-10-08 |  | 1% | Левченко Денис; Варламкин Алексей | 176h |
| 2 | 2 | **Написание ядра системы** | 2009-10-09 | 2009-10-27 | 1 |  |  | 304h |
| 3 | 2.1 | написание memory maneger / garbage collector | 2009-10-09 | 2009-10-22 | 1 |  | Левченко Денис | 112h |
| 4 | 2.2 | написание хранилищ функций | 2009-10-09 | 2009-10-15 | 1 |  | Варламкин Алексей | 56h |
| 5 | 2.3 | написание хранилища задач и планировщика | 2009-10-16 | 2009-10-19 | 4 |  | Варламкин Алексей | 32h |
| 6 | 2.4 | реализация системыобработки ошибок | 2009-10-20 | 2009-10-22 | 5 |  | Варламкин Алексей | 24h |
| 7 | 2.5 | интеграция ядра | 2009-10-23 | 2009-10-27 | 3, 6 |  | Левченко Денис; Варламкин Алексей | 80h |
| 8 | 3 | Написание числового модуля | 2009-10-28 | 2009-11-01 | 2 |  | Варламкин Алексей | 40h |
| 9 | 4 | Разработка консольного клиента | 2009-10-28 | 2009-11-01 | 2 |  | Левченко Денис | 40h |
| 10 | 5 | **Разработка графического клиента** | 2009-10-09 | 2009-11-17 | 1 |  |  | 320h |
| 11 | 5.1 | Изучение библиотеки Qt | 2009-10-09 | 2009-10-22 | 1 |  | Бондалетов Алексей | 112h |
| 12 | 5.2 | Разработка концепции графического пользовательского интерфейса | 2009-10-23 | 2009-11-01 | 11 |  | Бондалетов Алексей | 80h |
| 13 | 5.3 | Написание графического клиента | 2009-11-02 | 2009-11-17 | 11, 12 |  | Бондалетов Алексей | 128h |
| 14 | 6 | **Инженерная надстройка для калькулятора** | 2009-11-02 | 2009-11-13 | 8 |  |  | 136h |
| 15 | 6.1 | Поддержка различных способов представления чисел и углов | 2009-11-02 | 2009-11-04 | 2 |  | Левченко Денис | 24h |
| 16 | 6.2 | Поддержка математических функций | 2009-11-05 | 2009-11-07 | 15 |  | Левченко Денис | 24h |
| 17 | 6.3 | Поддержка побитовых операций | 2009-11-02 | 2009-11-02 |  |  | Варламкин Алексей | 8h |
| 18 | 6.4 | Поддержка специфических целочисленных функций | 2009-11-03 | 2009-11-04 | 17 |  | Варламкин Алексей | 16h |
| 19 | 6.5 | Поддержка расчетов по комбинаторным формулам | 2009-11-05 | 2009-11-06 | 18 |  | Варламкин Алексей | 16h |
| 20 | 6.6 | Вычисление погрешностей результатов | 2009-11-08 | 2009-11-13 | 16 |  | Левченко Денис | 48h |
| 21 | 7 | **Реализация дополнительных математических объектов** | 2009-11-07 | 2009-11-19 | 8 |  |  | 152h |
| 22 | 7.1 | Реализация арифметики многократной точности | 2009-11-07 | 2009-11-09 | 19 |  | Варламкин Алексей | 24h |
| 23 | 7.2 | Реализация рациональных чисел | 2009-11-10 | 2009-11-11 | 22 |  | Варламкин Алексей | 16h |
| 24 | 7.3 | Реализация комплексных чисел и основных операций над ними | 2009-11-12 | 2009-11-14 | 23 |  | Варламкин Алексей | 24h |
| 25 | 7.4 | Реализация векторов | 2009-11-14 | 2009-11-15 | 20 |  | Левченко Денис | 16h |
| 26 | 7.5 | Реализация матриц | 2009-11-15 | 2009-11-17 | 24 |  | Варламкин Алексей | 24h |
| 27 | 7.6 | Реализация полиномов и основных операций с ними | 2009-11-16 | 2009-11-19 | 25 |  | Левченко Денис | 32h |
| 28 | 7.7 | Реализация вычетов по модулю | 2009-11-18 | 2009-11-19 | 26 |  | Варламкин Алексей | 16h |

Notes:
- 8: Осуществление четырех стандартных арифметических / действий (+, -, *, /) над целыми 32/64-разрядными числами.
- 15: Поддержка различных способов представления чисел (двоичная, / восьмеричная, десятичная, шестнадца 442;иричная системы счисления) / и углов (градусы, грады, радианы).
- 16: Поддержка математических функций (sin(x), cos(x), tg(x); / arcsin(x), arccos(x), arctg(x); sh(x), ch(x), th(x); e^x, 10^x, x^y; / ln(x), lg(x), log_2(x), log_y(x); 1/x; x^2, x^3; sqrt(x), crt(x); / abs(x), int(x), frac(x), rand(x)).

| ID | WBS | Task | Start | Finish | Predecessors | Resources | Work |
| --- | --- | --- | --- | --- | --- | --- | --- |
| 29 | 8 | **Поддержка решения стандартных задач** | 2009-11-20 | 2009-12-08 | 8 |  | 264h |
| 30 | 8.1 | Реализация метода решения линейных систем уравнений | 2009-11-20 | 2009-11-23 | 27 | Левченко Денис | 32h |
| 31 | 8.2 | Решение квадратных уравнений | 2009-11-20 | 2009-11-21 | 28 | Варламкин Алексей | 16h |
| 32 | 8.3 | Реализация дифференцирования элементарных функций | 2009-11-22 | 2009-11-25 | 31 | Варламкин Алексей | 32h |
| 33 | 8.4 | Реализация факторизации чисел | 2009-11-24 | 2009-11-26 | 30 | Левченко Денис | 24h |
| 34 | 8.5 | Реализация алгоритма нахождения НОД и НОК | 2009-11-26 | 2009-11-27 | 32 | Варламкин Алексей | 16h |
| 35 | 8.6 | Реализация решения линейных систем неравенств | 2009-11-27 | 2009-11-30 | 33 | Левченко Денис | 32h |
| 36 | 8.7 | Разработка модуля построения 2d графиков | 2009-11-28 | 2009-12-03 | 34 | Варламкин Алексей | 48h |
| 37 | 8.8 | Разработка модуля построения 3d графиков | 2009-12-01 | 2009-12-08 | 35 | Левченко Денис | 64h |
| 38 | 9 | **Реализация поддержки численных методов решения задач** | 2009-12-04 | 2009-12-17 | 20 |  | 168h |
| 39 | 9.1 | Реализация алгоритмов нахождения корней уравнений | 2009-12-04 | 2009-12-07 | 36 | Варламкин Алексей | 32h |
| 40 | 9.2 | Реализация решения систем линейных уравнений | 2009-12-08 | 2009-12-13 | 39 | Варламкин Алексей | 48h |
| 41 | 9.3 | Модуль приближения функций | 2009-12-09 | 2009-12-12 | 37 | Левченко Денис | 32h |
| 42 | 9.4 | Модуль численного дифференцирования | 2009-12-13 | 2009-12-15 | 41 | Левченко Денис | 24h |
| 43 | 9.5 | Модуль численного интегрирования | 2009-12-14 | 2009-12-17 | 40 | Варламкин Алексей | 32h |
| 44 | 10 | **Имплементация физического расширения** | 2009-11-18 | 2009-12-19 |  |  | 80h |
| 45 | 10.1 | Реализация конвертора величин | 2009-12-16 | 2009-12-17 | 42 | Левченко Денис | 16h |
| 46 | 10.2 | Реализация учета размерностей величин | 2009-12-18 | 2009-12-19 | 45 | Левченко Денис | 16h |
| 47 | 10.3 | База данных с основными физическими формулами | 2009-11-18 | 2009-11-23 | 13 | Бондалетов Алексей | 48h |
